# Gant

Schedule from MS Project, 2023-01-16 to 2023-04-24, A marks actual dates.

## Calendars

- Standard: Mon-Fri 08:00-12:00, 13:00-17:00; Sat-Sun off. Exceptions (off unless hours are given): 2023-01-29 08:00-12:00, 13:00-17:00, 2023-02-04 08:00-12:00, 13:00-17:00.

## Resources

| Resource |
| --- |
| Philippe |
| Antoine |
| Alexandra |
| Sammy |
| Benjamin |
| Louis |

## Schedule

| ID | WBS | Task | Type | Duration | Start | Finish | Predecessors | Complete | Remaining | Total slack | Free slack | Constraint | Resources | Work | Actual work |
| --- | --- | --- | --- | --- | --- | --- | --- | --- | --- | --- | --- | --- | --- | --- | --- |
| 1 | 1 | **Développement d'un puissance-mètre laser** |  | 73d? | 2023-01-16 A | 2023-04-24 |  | 13% | 63.5d? |  |  |  |  | 2332.4h | 284.8h |
| 2 | 1.1 | **Design préliminaire du puissance-mètre laser** |  | 28d? | 2023-01-16 A | 2023-02-20 |  | 13% | 24.36d? |  |  |  |  | 2332.4h | 284.8h |
| 3 | 1.1.1 | Lectures des rapports des années précédents |  | 5d | 2023-01-16 A | 2023-01-20 A |  | 100% |  |  |  |  | Philippe; Sammy [50%]; Antoine; Alexandra; Benjamin; Louis | 40h | 40h |
| 4 | 1.1.2 | Choix d'une approche de design | milestone | 0d | 2023-01-23 A | 2023-01-23 A | 3 | 100% |  |  |  | start no earlier than 2023-01-23 | Alexandra; Antoine; Benjamin; Louis; Philippe; Sammy |  |  |
| 5 | 1.1.3 | Familiarisation avec Altium |  | 2d | 2023-01-24 A | 2023-01-25 A | 3 | 100% |  |  |  |  | Philippe; Sammy [30%] | 32h | 32h |
| 6 | 1.1.4 | Design préliminaire des circuits |  | 3.5d | 2023-01-26 A | 2023-01-30 A | 5 | 100% |  |  |  | start no earlier than 2023-01-26 | Philippe | 28h | 28h |
| 7 | 1.1.5 | Début de la réalisation du PCB sur Altium |  | 3.5d | 2023-01-30 | 2023-02-02 | 6 |  |  | 30.5d | 0d |  | Philippe | 28h |  |
| 8 | 1.1.6 | Mise en CAD du PCB sur Altium |  | 2.5d | 2023-02-03 | 2023-02-06 | 7 |  |  | 30.5d | 0.35d | start no earlier than 2023-01-30 | Philippe [50%] | 10h |  |
| 9 | 1.1.7 | Apprentissage du logiciel de simulation thermique |  | 5d | 2023-01-18 A | 2023-01-27 A | 3 | 100% |  |  |  | start no earlier than 2023-01-24 | Louis [40%]; Antoine | 70.4h | 70.4h |
| 10 | 1.1.8 | Design préliminaire des supports des lentilles absorbantes |  | 5.5d | 2023-01-29 A | 2023-02-03 | 9 | 18% | 4.5d | 6.5d | 2.35d | start no earlier than 2023-01-26 | Antoine | 44h | 8h |
| 11 | 1.1.9 | Exploration des possibilités de design optiques et lentilles (parcours/absorption) |  | 6.35d | 2023-01-24 A | 2023-01-31 A | 3 | 100% |  |  |  | start no earlier than 2023-01-23 | Alexandra; Louis [40%] | 74.4h | 74.4h |
| 12 | 1.1.10 | Choix des lentilles et simulations (thermique/parcours optique) |  | 5.5d | 2023-01-31 | 2023-02-06 | 11 |  |  | 30.15d | 0d |  | Alexandra; Louis | 88h |  |
| 13 | 1.1.11 | Intégration des différents composants dans le CAD/simulation thermique |  | 3d | 2023-02-06 | 2023-02-09 | 12, 10, 8 |  |  | 30.15d | 0d | start no earlier than 2023-02-05 | Alexandra; Antoine; Louis; Philippe [50%] | 84h |  |
| 14 | 1.1.12 | Programmation de l'interface Labview |  | 9.5d | 2023-01-23 A | 2023-02-02 | 3 | 42% | 5.5d | 53.5d | 0.5d | finish no earlier than 2023-01-03 | Benjamin | 76h | 32h |
| 15 | 1.1.13 | Mise sur papier des algorithmes de traitement du Labview |  | 5d | 2023-02-03 | 2023-02-08 | 14, 7 |  |  | 53d |  |  | Benjamin; Philippe [50%] | 60h |  |
| 16 | 1.1.14 | Analyse du design préliminaire |  | 2d | 2023-02-09 | 2023-02-13 | 13 |  |  | 3.15d | 0d |  | Alexandra; Antoine; Benjamin; Louis; Philippe; Sammy [50%] | 88h |  |
| 17 | 1.1.15 | Rédaction du rapport 1 |  | 2d | 2023-02-13 | 2023-02-15 | 16 |  |  | 3.15d | 1.15d |  | Alexandra; Antoine; Benjamin; Louis; Philippe; Sammy [50%] | 88h |  |
| 18 | 1.1.16 | Remise rapport # 1 | milestone | 0d | 2023-02-17 | 2023-02-17 | 13, 17 |  |  | 2d | 0d | start no earlier than 2023-02-17 | Sammy |  |  |
| 19 | 1.1.17 | **Modélisation du design final** |  | 46d? | 2023-02-17 | 2023-04-24 |  |  |  | 1d |  |  |  | 1342.4h |  |
| 20 | 1.1.17.1 | Caractérisation du laser |  | 5d | 2023-02-20 | 2023-02-24 | 18 |  |  | 44d |  | start no earlier than 2023-02-20 | Alexandra; Sammy [30%] | 52h |  |
| 21 | 1.1.17.2 | Réalisation de la modélisation thermique sur l'ensemble de la plage de longueur d'onde |  | 5d | 2023-02-20 | 2023-02-24 | 18 |  |  | 38d | 0d | start no earlier than 2023-02-20 | Louis | 40h |  |
| 22 | 1.1.17.3 | Construction des courbes d'atténuation spectrales |  | 6d | 2023-02-27 | 2023-03-06 | 21 |  |  | 38d |  | start no earlier than 2023-02-20 | Louis [50%]; Alexandra [50%] | 36h |  |
| 23 | 1.1.17.4 | Vérification de la faisabilité technique du design préliminaire avec l'atelier |  | 5d | 2023-02-20 | 2023-02-24 | 18 |  |  | 37d | 0d | start no earlier than 2023-02-20 | Antoine | 40h |  |
| 24 | 1.1.17.5 | Modification au design en fonction du feedback de l'atelier et des simulations |  | 7d | 2023-02-27 | 2023-03-07 | 23 |  |  | 37d | 0d |  | Louis [50%]; Antoine; Alexandra [50%] | 96h |  |
| 25 | 1.1.17.6 | 23-02-27 | milestone | 0d | 2023-03-07 | 2023-03-07 | 24 |  |  | 37d |  |  | Sammy |  |  |
| 26 | 1.1.17.7 | Construction des plans de test de caractérisation des composants |  | 5d | 2023-02-17 | 2023-02-23 | 18 |  |  | 2d | 0d | finish no earlier than 2023-02-20 | Sammy [20%] | 8h |  |
| 27 | 1.1.17.8 | Construction du plan de test détaillé du prototype |  | 5d | 2023-02-24 | 2023-03-02 | 26 |  |  | 4d | 3d | start no earlier than 2023-02-20 | Sammy [20%] | 8h |  |
| 28 | 1.1.17.9 | Finalisation et commande du PCB |  | 6d | 2023-02-20 | 2023-02-27 | 18 |  |  | 43d |  | start no earlier than 2023-02-20 | Philippe [80%] | 38.4h |  |
| 29 | 1.1.17.10 | Écriture des scripts Labview pour le prototype |  | 10d | 2023-02-20 | 2023-03-03 | 18 |  |  | 39d |  | start no earlier than 2023-02-20 | Benjamin [50%]; Philippe [20%]; Sammy [20%] | 72h |  |
| 30 | 1.1.17.11 | Écriture des scripts LabView pour les tests |  | 7d | 2023-02-27 | 2023-03-07 | 26 |  |  | 1d | 0d | start no earlier than 2023-02-27 | Benjamin [50%] | 28h |  |
| 31 | 1.1.17.12 | Réalisation des différents test préliminaires |  | 3d | 2023-03-08 | 2023-03-10 | 30, 27 |  |  | 1d | 0d | start no earlier than 2023-03-07 | Sammy [50%]; Alexandra [50%]; Louis [50%]; Philippe | 60h |  |
| 32 | 1.1.17.13 | Rédaction rapport #2 |  | 3d | 2023-03-13 | 2023-03-15 | 31 |  |  | 1d |  |  |  |  |  |
| 33 | 1.1.17.14 | Remise rapport #2 | milestone | 0d | 2023-03-17 | 2023-03-17 | 32 |  |  | 1d | 0d | start no earlier than 2023-03-17 | Sammy |  |  |

| ID | WBS | Task | Type | Duration | Start | Finish | Predecessors | Total slack | Free slack | Constraint | Resources | Work |
| --- | --- | --- | --- | --- | --- | --- | --- | --- | --- | --- | --- | --- |
| 34 | 1.1.17.15 | **Assemblage et évaluation de l'appareil de mesure** |  | 26d? | 2023-03-17 | 2023-04-24 |  | 1d |  |  |  | 864h |
| 35 | 1.1.17.15.1 | Assemblage de l'appareil/Labview |  | 5d | 2023-03-17 | 2023-03-23 | 33 | 1d | 0d |  | Alexandra; Antoine; Benjamin; Louis; Philippe; Sammy [50%] | 220h |
| 36 | 1.1.17.15.2 | Évaluation des performances du prototype |  | 10d | 2023-03-24 | 2023-04-06 | 35 | 1d | 0d |  | Alexandra; Antoine; Benjamin; Louis; Philippe; Sammy [50%] | 240h |
| 37 | 1.1.17.15.3 | Correction des problèmes mineurs |  | 5d | 2023-04-07 | 2023-04-13 | 36 | 1d | 0d |  | Alexandra; Antoine; Benjamin; Louis; Philippe; Sammy [50%] | 220h |
| 38 | 1.1.17.15.4 | Démonstration de l'appareil de mesure | milestone | 0d | 2023-04-13 | 2023-04-13 | 37 | 1d | 0d | start no earlier than 2023-04-11 | Alexandra; Antoine; Benjamin; Louis; Philippe; Sammy |  |
| 39 | 1.1.17.15.5 | Rédaction du rapport final |  | 5d? | 2023-04-14 | 2023-04-20 | 38 | 2d | 0d |  | Alexandra [50%]; Antoine [50%]; Benjamin [50%]; Louis [50%]; Philippe [50%]; Sammy [50%] | 120h |
| 40 | 1.1.17.15.6 | Remise rapport final | milestone | 0d | 2023-04-21 | 2023-04-21 | 39 | 2d |  | start no earlier than 2023-04-21 | Sammy |  |
| 41 | 1.1.17.15.7 | Préparation de la présentation |  | 6d? | 2023-04-14 | 2023-04-21 | 38, 40 | 1d |  |  | Alexandra [50%]; Antoine [50%]; Benjamin [50%]; Louis [50%]; Philippe [50%]; Sammy [50%] | 64h |
| 42 | 1.1.17.15.8 | Présentation du projet | milestone | 0d | 2023-04-24 | 2023-04-24 |  | 4d |  | start no earlier than 2023-04-24 | Alexandra; Antoine; Benjamin; Louis; Philippe; Sammy |  |
| 44 | 1.1.18 | **Gestion** |  | 58d | 2023-01-23 | 2023-04-11 |  | 10d |  |  |  | 179.2h |
| 45 | 1.1.18.1 | Contrôle écrit individuel | milestone | 0d | 2023-03-27 | 2023-03-27 |  | 24d |  | start no earlier than 2023-03-27 | Alexandra; Antoine; Benjamin; Louis; Philippe; Sammy |  |
| 46 | 1.1.18.2 | Rédation OJ1, PV1 et Gant |  | 4d | 2023-01-23 | 2023-01-26 |  | 23d | 0d | start no earlier than 2023-01-23 | Sammy [40%] | 12.8h |
| 47 | 1.1.18.3 | Rédaction OJ2, PV2, mise à jour Gant |  | 4d | 2023-01-27 | 2023-01-31 | 46 | 23d | 0d |  | Sammy [50%] | 16h |
| 48 | 1.1.18.4 | Dépôt gestion de projet 1 | milestone | 0d | 2023-01-31 | 2023-01-31 | 47 | 23d | 0d | start no earlier than 2023-01-31 | Sammy [50%] |  |
| 49 | 1.1.18.5 | Rédaction OJ3, PV3, mise à jour Gant |  | 4d | 2023-02-01 | 2023-02-04 | 48 | 23d | 0d |  | Sammy [50%] | 16h |
| 50 | 1.1.18.6 | Rédaction OJ4, PV4, mise à jour Gant |  | 4d | 2023-02-06 | 2023-02-09 | 49 | 23d | 2d | start no earlier than 2023-02-06 | Sammy [50%] | 16h |
| 51 | 1.1.18.7 | Dépôt gestion de projet 2 | milestone | 0d | 2023-02-14 | 2023-02-14 | 50 | 21d | 0d | start no earlier than 2023-02-14 | Sammy [50%] |  |
| 52 | 1.1.18.8 | Rédaction OJ5, PV5, mise à jour Gant |  | 4d | 2023-02-14 | 2023-02-17 | 51 | 21d | 0d |  | Sammy [50%] | 16h |
| 53 | 1.1.18.9 | Rédaction OJ6, PV6 mise à jour Gant |  | 4d | 2023-02-20 | 2023-02-23 | 52 | 21d | 2d |  | Sammy [20%] | 6.4h |
| 54 | 1.1.18.10 | Dépôt gestion de projet 3 | milestone | 0d | 2023-02-28 | 2023-02-28 | 53 | 19d | 0d | start no earlier than 2023-02-28 | Sammy [50%] |  |
| 55 | 1.1.18.11 | Rédaction OJ2, PV2, mise à jour Gant |  | 4d | 2023-02-28 | 2023-03-03 | 54 | 19d | 0d |  | Sammy [50%] | 16h |
| 56 | 1.1.18.12 | Rédaction OJ2, PV2, mise à jour Gant |  | 4d | 2023-03-06 | 2023-03-09 | 55 | 19d | 2d |  | Sammy [50%] | 16h |
| 57 | 1.1.18.13 | Dépôt gestion de projet 4 | milestone | 0d | 2023-03-14 | 2023-03-14 | 56 | 17d | 0d | start no earlier than 2023-03-14 | Sammy [50%] |  |
| 58 | 1.1.18.14 | Rédaction OJ2, PV2, mise à jour Gant |  | 4d | 2023-03-14 | 2023-03-17 | 57 | 17d | 0d |  | Sammy [50%] | 16h |
| 59 | 1.1.18.15 | Rédaction OJ2, PV2, mise à jour Gant |  | 4d | 2023-03-20 | 2023-03-23 | 58 | 17d | 2d |  | Sammy [50%] | 16h |
| 60 | 1.1.18.16 | Dépôt gestion de projet 5 | milestone | 0d | 2023-03-28 | 2023-03-28 | 59 | 15d | 0d | start no earlier than 2023-03-28 | Sammy [50%] |  |
| 61 | 1.1.18.17 | Rédaction OJ2, PV2, mise à jour Gant |  | 4d | 2023-03-28 | 2023-03-31 | 60 | 15d | 0d |  | Sammy [50%] | 16h |
| 62 | 1.1.18.18 | Rédaction OJ2, PV2, mise à jour Gant |  | 4d | 2023-04-03 | 2023-04-06 | 61 | 15d | 2d |  | Sammy [50%] | 16h |
| 63 | 1.1.18.19 | Dépôt gestion de projet 6 | milestone | 0d | 2023-04-11 | 2023-04-11 | 62 | 13d |  | start no earlier than 2023-04-11 | Sammy [50%] |  |
